# 舍里app1

Schedule from MS Project, 2019-03-01 to 2019-05-21, costs in ¥.
Microsoft

## Calendars

- 标准: Mon-Fri 08:00-12:00, 13:00-17:00; Sat-Sun off.

## Resources

| Resource | Rate |
| --- | --- |
| 项目经理 | 50 |
| 技术专家 | 35 |
| 质量专家 | 35 |
| 需求专家 | 35 |
| UI专家 | 35 |
| 材料 |  |
| 间接成本 |  |
| 前端程序员1 | 25 |
| 前端程序员2 | 25 |
| 后端程序员1 | 25 |
| 后端程序员2 | 25 |
| 测试员1 | 25 |
| 测试员2 | 25 |
| 团建费用 |  |

## Schedule

| ID | WBS | Task | Type | Duration | Start | Finish | Predecessors | Total slack | Resources | Work | Cost |
| --- | --- | --- | --- | --- | --- | --- | --- | --- | --- | --- | --- |
| 1 | 1 | **启动** |  | 2.5d | 2019-03-01 09:00 | 2019-03-05 14:00 |  |  | 间接成本 [0.1%] | 60h | 2,900 |
| 2 | 1.1 | 组建核心团队 | manual | 0.5d | 2019-03-01 09:00 | 2019-03-01 14:00 |  |  | 项目经理; UI专家; 技术专家; 需求专家; 质量专家 | 20h | 760 |
| 3 | 1.2 | 干系人分析 | manual | 0.5d | 2019-03-01 09:00 | 2019-03-01 14:00 |  |  | 需求专家; 项目经理 | 8h | 340 |
| 4 | 1.3 | 里程碑计划 | manual | 0.5d | 2019-03-04 09:00 | 2019-03-04 14:00 |  |  | 项目经理; 需求专家 | 8h | 340 |
| 5 | 1.4 | 制定项目章程 | manual | 0.5d | 2019-03-04 09:00 | 2019-03-04 14:00 | 2, 3, 4 |  | 项目经理 | 4h | 200 |
| 6 | 1.5 | 项目启动大会 | manual | 0.5d | 2019-03-05 09:00 | 2019-03-05 14:00 | 5 |  | UI专家; 技术专家; 项目经理; 需求专家; 质量专家 | 20h | 760 |
| 7 | 2 | **规划** |  | 21d | 2019-03-06 09:00 | 2019-04-04 09:00 |  |  | 间接成本 [0.1%] | 220h | 12,920 |
| 8 | 2.1 | **规划范围** |  | 4d | 2019-03-06 09:00 | 2019-03-12 09:00 |  |  |  | 48h | 2,040 |
| 9 | 2.1.1 | 制定需求说明书 | manual | 1d | 2019-03-06 09:00 | 2019-03-07 09:00 | 6 |  | 需求专家 | 8h | 280 |
| 10 | 2.1.2 | 界面设计 | manual | 1d | 2019-03-07 09:00 | 2019-03-08 09:00 | 9 |  | UI专家 | 8h | 280 |
| 11 | 2.1.3 | 详细设计说明书 | manual | 1d | 2019-03-07 09:00 | 2019-03-08 09:00 | 9 |  | 技术专家 | 8h | 280 |
| 12 | 2.1.4 | 范围说明书 | manual | 1d | 2019-03-07 09:00 | 2019-03-08 09:00 | 9 |  | 项目经理 | 8h | 400 |
| 13 | 2.1.5 | 创建WBS | manual | 1d | 2019-03-08 09:00 | 2019-03-11 09:00 | 10, 11, 12 |  | 项目经理 | 8h | 400 |
| 14 | 2.1.6 | 形成范围基准 |  | 1d | 2019-03-11 09:00 | 2019-03-12 09:00 | 13 | 0d | 项目经理 | 8h | 400 |
| 15 | 2.2 | **规划时间** |  | 5d | 2019-03-12 09:00 | 2019-03-19 09:00 |  |  |  | 40h | 2,000 |
| 16 | 2.2.1 | 排序工作包顺序 | manual | 1d | 2019-03-12 09:00 | 2019-03-13 09:00 | 14 |  | 项目经理 | 8h | 400 |
| 17 | 2.2.2 | 估算资源 | manual | 1d | 2019-03-13 09:00 | 2019-03-14 09:00 | 16 |  | 项目经理 | 8h | 400 |
| 18 | 2.2.3 | 估算持续时间 | manual | 1d | 2019-03-14 09:00 | 2019-03-15 09:00 | 17 |  | 项目经理 | 8h | 400 |
| 19 | 2.2.4 | 制定进度计划 | manual | 1d | 2019-03-15 09:00 | 2019-03-18 09:00 | 18 |  | 项目经理 | 8h | 400 |
| 20 | 2.2.5 | 形成进度基准 | manual | 1d | 2019-03-18 09:00 | 2019-03-19 09:00 | 19 |  | 项目经理 | 8h | 400 |
| 21 | 2.3 | **规划成本** |  | 2d | 2019-03-19 09:00 | 2019-03-21 09:00 |  |  |  | 16h | 800 |
| 22 | 2.3.1 | 项目成本估算 | manual | 1d | 2019-03-19 09:00 | 2019-03-20 09:00 | 20 |  | 项目经理 | 8h | 400 |
| 23 | 2.3.2 | 项目成本预算 | manual | 1d | 2019-03-20 09:00 | 2019-03-21 09:00 | 22 |  | 项目经理 | 8h | 400 |
| 24 | 2.4 | **规划质量** |  | 2d | 2019-03-21 09:00 | 2019-03-25 09:00 |  |  |  | 16h | 560 |
| 25 | 2.4.1 | 制定测试计划 | manual | 1d | 2019-03-21 09:00 | 2019-03-22 09:00 | 14 |  | 质量专家 | 8h | 280 |
| 26 | 2.4.2 | 制定测试用例 | manual | 1d | 2019-03-22 09:00 | 2019-03-25 09:00 | 25 |  | 质量专家 | 8h | 280 |

| ID | WBS | Task | Type | Duration | Start | Finish | Predecessors | Total slack | Constraint | Resources | Work | Cost |
| --- | --- | --- | --- | --- | --- | --- | --- | --- | --- | --- | --- | --- |
| 27 | 2.5 | **规划人力资源** |  | 2d | 2019-03-25 09:00 | 2019-03-27 09:00 |  |  |  |  | 16h | 800 |
| 28 | 2.5.1 | 制定人力资源计划 | manual | 1d | 2019-03-25 09:00 | 2019-03-26 09:00 | 17 |  |  | 项目经理 | 8h | 400 |
| 29 | 2.5.2 | 制定人员配备管理计划 | manual | 1d | 2019-03-26 09:00 | 2019-03-27 09:00 | 28 |  |  | 项目经理 | 8h | 400 |
| 30 | 2.6 | **规划沟通** |  | 1d | 2019-03-27 09:00 | 2019-03-28 09:00 |  |  |  |  | 8h | 400 |
| 31 | 2.6.1 | 制定沟通管理计划 | manual | 1d | 2019-03-27 09:00 | 2019-03-28 09:00 | 29 |  |  | 项目经理 | 8h | 400 |
| 32 | 2.7 | **规划采购** |  | 1d | 2019-03-29 09:00 | 2019-04-01 09:00 |  |  |  |  | 12h | 600 |
| 33 | 2.7.1 | 自制/外购分析 | manual | 0.5d | 2019-03-29 09:00 | 2019-03-29 14:00 | 17 |  |  | 项目经理 | 4h | 200 |
| 34 | 2.7.2 | 制定采购文件 | manual | 1d | 2019-04-01 09:00 | 2019-04-01 18:00 | 33 |  |  | 项目经理 | 8h | 400 |
| 35 | 2.8 | **规划风险** |  | 3d | 2019-04-01 09:00 | 2019-04-04 09:00 |  |  |  |  | 24h | 1,200 |
| 36 | 2.8.1 | 识别风险 | manual | 1d | 2019-04-01 09:00 | 2019-04-02 09:00 | 15, 21, 24, 27 |  |  | 项目经理 | 8h | 400 |
| 37 | 2.8.2 | 风险分析 | manual | 1d | 2019-04-02 09:00 | 2019-04-03 09:00 | 36 |  |  | 项目经理 | 8h | 400 |
| 38 | 2.8.3 | 制定风险登记册 | manual | 1d | 2019-04-03 09:00 | 2019-04-04 09:00 | 37 |  |  | 项目经理 | 8h | 400 |
| 39 | 2.9 | 规划整合 |  | 1d | 2019-04-04 09:00 | 2019-04-05 09:00 | 38 | 32.88d | start no earlier than 2019-04-04 09:00 | 项目经理; UI专家; 技术专家; 需求专家; 质量专家 | 40h | 1,520 |
| 40 | 3 | **执行与监控** |  | 33d | 2019-04-05 09:00 | 2019-05-21 18:00 |  |  |  |  | 1580h | 56,780 |
| 41 | 3.1 | 组建项目团队 | manual | 2d | 2019-04-05 09:00 | 2019-04-09 09:00 |  |  |  | UI专家; 技术专家; 项目经理; 需求专家; 质量专家 | 80h | 3,040 |
| 42 | 3.2 | **项目执行** |  | 25d | 2019-04-09 09:00 | 2019-05-13 18:00 |  |  |  |  | 252h | 6,300 |
| 43 | 3.2.1 | **用户模块** |  | 2d | 2019-04-09 09:00 | 2019-04-10 18:00 |  |  |  |  | 24h | 600 |
| 44 | 3.2.1.1 | **用户注册** |  | 2d | 2019-04-09 09:00 | 2019-04-10 18:00 |  |  |  |  | 16h | 400 |
| 45 | 3.2.1.1.1 | 构建用户信息的数据表 | manual | 0.5d | 2019-04-09 09:00 | 2019-04-09 14:00 | 41 |  |  | 后端程序员1 | 4h | 100 |
| 46 | 3.2.1.1.2 | 注册页面的UI设计 | manual | 0.5d | 2019-04-09 09:00 | 2019-04-09 14:00 | 41 |  |  | 前端程序员1 | 4h | 100 |
| 47 | 3.2.1.1.3 | 注册页面注册功能实现 | manual | 0.5d | 2019-04-09 14:00 | 2019-04-10 09:00 | 46 |  |  | 后端程序员1 | 4h | 100 |
| 48 | 3.2.1.1.4 | 注册功能的测试 | manual | 0.5d | 2019-04-10 09:00 | 2019-04-10 14:00 | 47 |  |  | 测试员1 | 4h | 100 |
| 49 | 3.2.1.2 | **用户登录** |  | 1d | 2019-04-09 09:00 | 2019-04-10 09:00 |  |  |  |  | 8h | 200 |
| 50 | 3.2.1.2.1 | 登录页面的UI设计 | manual | 0.5d | 2019-04-09 09:00 | 2019-04-09 14:00 | 41 |  |  | 前端程序员2 | 4h | 100 |
| 51 | 3.2.1.2.2 | 登录页面登录功能实现 | manual | 0.3d | 2019-04-09 14:00 | 2019-04-09 16:24 | 50 |  |  | 后端程序员2 | 2.4h | 60 |
| 52 | 3.2.1.2.3 | 登录功能的测试 | manual | 0.2d | 2019-04-09 16:24 | 2019-04-10 09:00 | 51 |  |  | 测试员2 | 1.6h | 40 |

| ID | WBS | Task | Type | Duration | Start | Finish | Predecessors | Resources | Work | Cost |
| --- | --- | --- | --- | --- | --- | --- | --- | --- | --- | --- |
| 53 | 3.2.2 | **求助模块** |  | 6d | 2019-04-10 09:00 | 2019-04-17 18:00 |  |  | 48h | 1,200 |
| 54 | 3.2.2.1 | 设计求助信息的数据表 | manual | 0.5d | 2019-04-10 09:00 | 2019-04-10 14:00 | 41 | 后端程序员1 | 4h | 100 |
| 55 | 3.2.2.2 | 页面设计 | manual | 1d | 2019-04-10 09:00 | 2019-04-11 09:00 | 41 | 前端程序员1 | 8h | 200 |
| 56 | 3.2.2.3 | 发布求助功能 | manual | 1d | 2019-04-11 09:00 | 2019-04-12 09:00 | 55 | 后端程序员1 | 8h | 200 |
| 57 | 3.2.2.4 | 再编辑求助 | manual | 1.5d | 2019-04-12 09:00 | 2019-04-15 14:00 | 56 | 后端程序员1 | 12h | 300 |
| 58 | 3.2.2.5 | 解答求助 | manual | 0.5d | 2019-04-15 09:00 | 2019-04-15 14:00 | 55 | 后端程序员1 | 4h | 100 |
| 59 | 3.2.2.6 | 测试发布、解答功能 | manual | 1.5d | 2019-04-16 09:00 | 2019-04-17 14:00 | 58 | 测试员1 | 12h | 300 |
| 60 | 3.2.3 | **文章模块** |  | 8d | 2019-04-11 09:00 | 2019-04-23 09:00 |  |  | 64h | 1,600 |
| 61 | 3.2.3.1 | 设计文章信息的数据表 | manual | 0.5d | 2019-04-11 09:00 | 2019-04-11 14:00 | 41 | 后端程序员2 | 4h | 100 |
| 62 | 3.2.3.2 | 页面设计 | manual | 1d | 2019-04-12 09:00 | 2019-04-15 09:00 | 61 | 前端程序员2 | 8h | 200 |
| 63 | 3.2.3.3 | 发表文章 | manual | 2d | 2019-04-15 09:00 | 2019-04-17 09:00 | 62 | 后端程序员2 | 16h | 400 |
| 64 | 3.2.3.4 | 再编辑文章 | manual | 0.5d | 2019-04-17 09:00 | 2019-04-17 14:00 | 63 | 后端程序员2 | 4h | 100 |
| 65 | 3.2.3.5 | 评论文章 | manual | 0.5d | 2019-04-17 09:00 | 2019-04-17 14:00 | 63 | 后端程序员2 | 4h | 100 |
| 66 | 3.2.3.6 | 点赞文章 | manual | 0.5d | 2019-04-18 09:00 | 2019-04-18 14:00 | 63 | 后端程序员2 | 4h | 100 |
| 67 | 3.2.3.7 | 举报文章 | manual | 0.5d | 2019-04-18 09:00 | 2019-04-18 14:00 | 63 | 后端程序员2 | 4h | 100 |
| 68 | 3.2.3.8 | 收藏文章 | manual | 0.5d | 2019-04-19 09:00 | 2019-04-19 14:00 | 63 | 后端程序员2 | 4h | 100 |
| 69 | 3.2.3.9 | 测试发表、评论、点赞、收藏、举报功能 | manual | 2d | 2019-04-19 09:00 | 2019-04-23 09:00 | 63 | 测试员2 | 16h | 400 |
| 70 | 3.2.4 | **个人中心模块** |  | 9d | 2019-04-23 09:00 | 2019-05-06 09:00 |  |  | 68h | 1,700 |
| 71 | 3.2.4.1 | 设计个人详细信息数据表 | manual | 0.5d | 2019-04-23 09:00 | 2019-04-23 14:00 | 41 | 后端程序员1 | 4h | 100 |
| 72 | 3.2.4.2 | 页面设计 | manual | 1d | 2019-04-24 09:00 | 2019-04-25 09:00 | 41 | 前端程序员1 | 8h | 200 |
| 73 | 3.2.4.3 | 修改个人信息 | manual | 1d | 2019-04-25 09:00 | 2019-04-26 09:00 | 72 | 后端程序员1 | 8h | 200 |
| 74 | 3.2.4.4 | **我的发布** |  | 2d | 2019-04-26 09:00 | 2019-04-30 09:00 |  |  | 16h | 400 |
| 75 | 3.2.4.4.1 | 发布的求助列表 | manual | 0.5d | 2019-04-26 09:00 | 2019-04-26 14:00 | 41 | 后端程序员1 | 4h | 100 |
| 76 | 3.2.4.4.2 | 发布的文章列表 | manual | 0.5d | 2019-04-26 09:00 | 2019-04-26 14:00 | 41 | 后端程序员1 | 4h | 100 |
| 77 | 3.2.4.4.3 | 删除文章、求助 | manual | 0.5d | 2019-04-29 09:00 | 2019-04-29 14:00 | 75, 76 | 后端程序员1 | 4h | 100 |
| 78 | 3.2.4.4.4 | 文章、求助设置权限 | manual | 0.5d | 2019-04-29 09:00 | 2019-04-29 14:00 | 76 | 后端程序员1 | 4h | 100 |
| 79 | 3.2.4.5 | 我的收藏 | manual | 0.5d | 2019-04-30 09:00 | 2019-04-30 14:00 | 72 | 后端程序员1 | 4h | 100 |
| 80 | 3.2.4.6 | 我的好友 | manual | 0.5d | 2019-04-30 09:00 | 2019-04-30 14:00 | 71 | 后端程序员1 | 4h | 100 |

| ID | WBS | Task | Type | Duration | Start | Finish | Predecessors | Resources | Work | Cost |
| --- | --- | --- | --- | --- | --- | --- | --- | --- | --- | --- |
| 81 | 3.2.4.7 | **选择服务** |  | 2d | 2019-05-01 09:00 | 2019-05-03 09:00 |  |  | 16h | 400 |
| 82 | 3.2.4.7.1 | 寄存物品 | manual | 1d | 2019-05-01 09:00 | 2019-05-02 09:00 | 72 | 后端程序员1 | 8h | 200 |
| 83 | 3.2.4.7.2 | 捐赠物品 | manual | 1d | 2019-05-02 09:00 | 2019-05-03 09:00 | 72 | 后端程序员1 | 8h | 200 |
| 84 | 3.2.4.8 | 软件设置 | manual | 1d | 2019-05-03 09:00 | 2019-05-06 09:00 | 41 | 后端程序员1 | 8h | 200 |
| 85 | 3.2.5 | **咨询师模块** |  | 4d | 2019-05-06 09:00 | 2019-05-10 09:00 |  |  | 32h | 800 |
| 86 | 3.2.5.1 | 设计咨询师信息的数据表 | manual | 0.5d | 2019-05-06 09:00 | 2019-05-06 14:00 | 41 | 后端程序员2 | 4h | 100 |
| 87 | 3.2.5.2 | 应聘职位功能 | manual | 1d | 2019-05-06 09:00 | 2019-05-07 09:00 | 86 | 后端程序员2 | 8h | 200 |
| 88 | 3.2.5.3 | 咨询师信息列表 | manual | 0.5d | 2019-05-07 09:00 | 2019-05-07 14:00 | 86 | 后端程序员2 | 4h | 100 |
| 89 | 3.2.5.4 | 预约咨询师 | manual | 1d | 2019-05-08 09:00 | 2019-05-09 09:00 | 88 | 后端程序员2 | 8h | 200 |
| 90 | 3.2.5.5 | 与咨询师聊天 | manual | 1d | 2019-05-09 09:00 | 2019-05-10 09:00 | 86 | 后端程序员2 | 8h | 200 |
| 91 | 3.2.6 | **管理员模块** |  | 2d | 2019-05-10 09:00 | 2019-05-13 18:00 |  |  | 16h | 400 |
| 92 | 3.2.6.1 | 审核信息 | manual | 1d | 2019-05-10 09:00 | 2019-05-13 09:00 | 41 | 后端程序员1 | 8h | 200 |
| 93 | 3.2.6.2 | 活动发布 | manual | 0.5d | 2019-05-13 09:00 | 2019-05-13 14:00 | 92 | 后端程序员2 | 4h | 100 |
| 94 | 3.2.6.3 | 分析用户登录 | manual | 0.5d | 2019-05-13 09:00 | 2019-05-13 14:00 | 92 | 后端程序员1 | 4h | 100 |
| 95 | 3.3 | **项目监控** |  | 31d | 2019-04-09 09:00 | 2019-05-21 18:00 |  |  | 1120h | 37,000 |
| 96 | 3.3.1 | 各项指标监控 | manual | 25d | 2019-04-09 09:00 | 2019-05-13 18:00 | 41 | 测试员1; 测试员2; 项目经理 | 600h | 20,000 |
| 97 | 3.3.2 | 监控评审 | manual | 3d | 2019-05-14 09:00 | 2019-05-17 09:00 | 96 | 技术专家; 项目经理 | 48h | 2,040 |
| 98 | 3.3.3 | 变更评审 | manual | 2d | 2019-05-17 09:00 | 2019-05-21 09:00 | 97 | 技术专家; 项目经理 | 32h | 1,360 |
| 99 | 3.3.4 | 例会 | manual | 5d | 2019-04-09 09:00 | 2019-04-16 09:00 | 41 | UI专家; 测试员1; 测试员2; 后端程序员1; 后端程序员2; 技术专家; 前端程序员1; 前端程序员2; 项目经理; 需求专家; 质量专家 | 440h | 13,600 |
| 100 | 3.4 | **管理干系人** |  | 3d | 2019-04-09 09:00 | 2019-04-12 09:00 |  |  | 24h | 1,200 |
| 101 | 3.4.1 | 发布项目信息 | manual | 1d | 2019-04-09 09:00 | 2019-04-10 09:00 | 41 | 项目经理 | 8h | 400 |
| 102 | 3.4.2 | 报告监控指标 | manual | 1d | 2019-04-10 09:00 | 2019-04-11 09:00 | 41 | 项目经理 | 8h | 400 |
| 103 | 3.4.3 | 干系人沟通 | manual | 1d | 2019-04-11 09:00 | 2019-04-12 09:00 | 41 | 项目经理 | 8h | 400 |
| 104 | 3.5 | **团队建设** |  | 5d | 2019-04-09 09:00 | 2019-04-16 09:00 |  | 团建费用 [0.1%] |  | 5,000 |
| 105 | 3.5.1 | 培训 | manual | 1d | 2019-04-09 09:00 | 2019-04-10 09:00 | 41 |  |  |  |
| 106 | 3.5.2 | 娱乐活动 | manual | 2d | 2019-04-10 09:00 | 2019-04-12 09:00 | 41 |  |  |  |
| 107 | 3.5.3 | 沟通 | manual | 2d | 2019-04-09 09:00 | 2019-04-11 09:00 | 41 |  |  |  |
| 108 | 3.6 | 采购 | manual | 3d | 2019-04-09 09:00 | 2019-04-12 09:00 | 41 | 项目经理 | 24h | 1,200 |
| 109 | 3.7 | 项目验收 | manual | 2d | 2019-05-14 08:00 | 2019-05-15 17:00 | 42 | UI专家; 技术专家; 项目经理; 需求专家; 质量专家 | 80h | 3,040 |

| ID | WBS | Task | Type | Duration | Start | Finish | Predecessors | Resources | Work | Cost |
| --- | --- | --- | --- | --- | --- | --- | --- | --- | --- | --- |
| 110 | 4 | **收尾** |  | 3d | 2019-05-16 09:00 | 2019-05-21 09:00 |  |  | 88h | 3,440 |
| 111 | 4.1 | 项目终验 | manual | 1d | 2019-05-16 08:00 | 2019-05-16 17:00 | 109 | UI专家; 技术专家; 需求专家; 质量专家; 项目经理 | 40h | 1,520 |
| 112 | 4.2 | 结束采购 | manual | 1d | 2019-04-11 09:00 | 2019-04-12 09:00 | 107 | 项目经理 | 8h | 400 |
| 113 | 4.3 | 项目内部收尾 | manual | 1d | 2019-04-12 09:00 | 2019-04-15 09:00 | 112 | UI专家; 技术专家; 项目经理; 需求专家; 质量专家 | 40h | 1,520 |
